# SOW5

Schedule from MS Project, 2011-05-10 to 2011-06-06, costs in $, A marks actual dates.

## Calendars

- Standard: Mon-Fri 08:00-12:00, 13:00-17:00; Sat-Sun off.

## Resources

| Resource | Rate |
| --- | --- |
| VladS | 60 |
| VladL | 60 |
| VadimS | 60 |
| EliaK |  |
| AnyaV | 60 |
| MichaelL | 60 |
| ArturR | 60 |

## Schedule

| ID | WBS | Task | Duration | Start | Finish | Predecessors | Complete | Remaining | Total slack | Constraint |
| --- | --- | --- | --- | --- | --- | --- | --- | --- | --- | --- |
| 1 | 1 | **CRM UI** | 19.5d? | 2011-05-10 A | 2011-06-06 |  | 3% | 18.83d? | 0d |  |
| 2 | 1.1 | **Business Domain** | 19.5d? | 2011-05-10 A | 2011-06-06 |  | 7% | 18.15d? | 0d |  |
| 3 | 1.1.1 | Building | 4.5d? | 2011-05-10 A | 2011-05-16 |  | 30% | 3.15d? | 0d |  |
| 4 | 1.1.2 | Roof | 1d? | 2011-05-16 | 2011-05-17 | 3 |  |  | 0d |  |
| 5 | 1.1.3 | Parking | 2d? | 2011-05-17 | 2011-05-19 | 4 |  |  | 0d | start no earlier than 2011-05-17 |
| 6 | 1.1.4 | Locker | 1d? | 2011-05-19 | 2011-05-20 | 5 |  |  | 0d |  |
| 7 | 1.1.5 | Pool | 1d? | 2011-05-20 | 2011-05-23 | 6 |  |  | 0d |  |
| 8 | 1.1.6 | Boiler | 1d? | 2011-05-23 | 2011-05-24 | 7 |  |  | 0d |  |
| 9 | 1.1.7 | Unit | 1d? | 2011-05-24 | 2011-05-25 | 8 |  |  | 0d |  |
| 10 | 1.1.8 | Tenant | 1d? | 2011-05-25 | 2011-05-26 | 9 |  |  | 0d |  |
| 11 | 1.1.9 | Inquary | 1d? | 2011-05-26 | 2011-05-27 | 10 |  |  | 0d |  |
| 12 | 1.1.10 | Application | 1d? | 2011-05-27 | 2011-05-30 | 11 |  |  | 0d |  |
| 13 | 1.1.11 | Lease | 1d? | 2011-05-30 | 2011-05-31 | 12 |  |  | 0d |  |
| 14 | 1.1.12 | Employee | 1d? | 2011-05-31 | 2011-06-01 | 13 |  |  | 0d |  |
| 15 | 1.1.13 | Vendor | 1d? | 2011-06-01 | 2011-06-02 | 14 |  |  | 0d |  |
| 16 | 1.1.14 | Contract | 2d | 2011-06-02 | 2011-06-06 | 15 |  |  | 0d |  |
| 17 | 1.2 | **Policies** | 1d? | 2011-05-10 | 2011-05-10 |  |  |  | 18.5d |  |
| 18 | 1.2.1 | Background Check Requirements | 1d? | 2011-05-10 | 2011-05-10 |  |  |  | 18.5d |  |
| 19 | 1.2.2 | Deposit Calculation Formula | 1d? | 2011-05-10 | 2011-05-10 |  |  |  | 18.5d |  |
| 20 | 1.2.3 | Legal/Collections | 1d? | 2011-05-10 | 2011-05-10 |  |  |  | 18.5d |  |
| 21 | 1.2.4 | Kids | 1d? | 2011-05-10 | 2011-05-10 |  |  |  | 18.5d |  |
| 22 | 1.2.5 | Fees | 1d? | 2011-05-10 | 2011-05-10 |  |  |  | 18.5d |  |
| 23 | 1.2.6 | Pets | 1d? | 2011-05-10 | 2011-05-10 |  |  |  | 18.5d |  |
| 24 | 1.3 | **Business Processes** | 1d? | 2011-05-10 | 2011-05-10 |  |  |  | 18.5d |  |
| 25 | 1.3.1 | Application Approval | 1d? | 2011-05-10 | 2011-05-10 |  |  |  | 18.5d |  |
| 26 | 1.3.2 | Move In | 1d? | 2011-05-10 | 2011-05-10 |  |  |  | 18.5d |  |
| 27 | 1.3.3 | Notice | 1d? | 2011-05-10 | 2011-05-10 |  |  |  | 18.5d |  |
| 28 | 1.3.4 | Move Out | 1d? | 2011-05-10 | 2011-05-10 |  |  |  | 18.5d |  |
| 29 | 1.3.5 | Off Market Statuses | 1d? | 2011-05-10 | 2011-05-10 |  |  |  | 18.5d |  |
| 30 | 1.3.6 | Elevator Booking | 1d? | 2011-05-10 | 2011-05-10 |  |  |  | 18.5d |  |

Notes:
- 2: What is missing?
- 17: What other policies?
- 20: Split to multiple policies

| ID | WBS | Task | Type | Duration | Start | Finish | Total slack |
| --- | --- | --- | --- | --- | --- | --- | --- |
| 31 | 1.4 | **Profile** |  | 0d | 2011-05-10 | 2011-05-10 | 19.5d |
| 32 | 1.4.1 | Change Email, Password | milestone | 0d | 2011-05-10 | 2011-05-10 | 19.5d |
| 33 | 1.5 | **Preferences** |  | 0d | 2011-05-10 | 2011-05-10 | 19.5d |
| 34 | 1.5.1 | Notifications settings | milestone | 0d | 2011-05-10 | 2011-05-10 | 19.5d |
| 35 | 1.6 | **PM Settings** |  | 0d | 2011-05-10 | 2011-05-10 | 19.5d |
| 36 | 1.6.1 | Details | milestone | 0d | 2011-05-10 | 2011-05-10 | 19.5d |
| 37 | 1.6.2 | Default Policies | milestone | 0d | 2011-05-10 | 2011-05-10 | 19.5d |
| 38 | 1.7 | **Alerts/Notifications** |  | 1d? | 2011-05-10 | 2011-05-10 | 18.5d |
| 39 | 1.7.1 | Inquiry Alerts | milestone | 0d | 2011-05-10 | 2011-05-10 | 19.5d |
| 40 | 1.7.2 | Leas Application Alerts | milestone | 0d | 2011-05-10 | 2011-05-10 | 19.5d |
| 41 | 1.7.3 | Vacant Unit Alert |  | 1d? | 2011-05-10 | 2011-05-10 | 18.5d |
| 42 | 1.8 | Mails | milestone | 0d | 2011-05-10 | 2011-05-10 | 19.5d |
| 43 | 1.9 | **UI Framework Components and Functionality** |  | 1d? | 2011-05-10 | 2011-05-10 | 18.5d |
| 44 | 1.9.1 | Recent Activities | milestone | 0d | 2011-05-10 | 2011-05-10 | 19.5d |
| 45 | 1.9.2 | Favorites | milestone | 0d | 2011-05-10 | 2011-05-10 | 19.5d |
| 46 | 1.9.3 | Lister |  | 1d? | 2011-05-10 | 2011-05-10 | 18.5d |
| 47 | 1.9.4 | Text Search |  | 1d? | 2011-05-10 | 2011-05-10 | 18.5d |
| 48 | 1.10 | **Dashboard/Report** |  | 0d | 2011-05-10 | 2011-05-10 | 19.5d |
| 49 | 1.10.1 | **Gadgets** |  | 0d | 2011-05-10 | 2011-05-10 | 19.5d |
| 50 | 1.10.1.1 | Lister | milestone | 0d | 2011-05-10 | 2011-05-10 | 19.5d |
| 51 | 1.10.1.2 | Pie Chart | milestone | 0d | 2011-05-10 | 2011-05-10 | 19.5d |
| 52 | 1.10.1.3 | Bar Chart | milestone | 0d | 2011-05-10 | 2011-05-10 | 19.5d |
| 53 | 1.10.1.4 | Line Chart | milestone | 0d | 2011-05-10 | 2011-05-10 | 19.5d |
| 54 | 1.10.1.5 | Notifications Gadget | milestone | 0d | 2011-05-10 | 2011-05-10 | 19.5d |
| 55 | 1.10.1.6 | Alerts Gadget | milestone | 0d | 2011-05-10 | 2011-05-10 | 19.5d |
| 56 | 1.10.2 | Dashboard Management | milestone | 0d | 2011-05-10 | 2011-05-10 | 19.5d |
| 57 | 1.10.3 | Report Management | milestone | 0d | 2011-05-10 | 2011-05-10 | 19.5d |

| ID | WBS | Task | Duration | Start | Finish | Predecessors | Total slack | Free slack | Resources | Work | Cost |
| --- | --- | --- | --- | --- | --- | --- | --- | --- | --- | --- | --- |
| 58 | 1.11 | **CMS for Portal** | 1d? | 2011-05-10 | 2011-05-10 |  | 18.5d |  |  |  |  |
| 59 | 1.11.1 | General Site Properties | 1d? | 2011-05-10 | 2011-05-10 |  | 18.5d |  |  |  |  |
| 60 | 1.11.2 | Site Map Tree with Editing Capabilities | 1d? | 2011-05-10 | 2011-05-10 |  | 18.5d |  |  |  |  |
| 61 | 1.11.3 | Editor to define Static Pages | 1d? | 2011-05-10 | 2011-05-10 |  | 18.5d |  |  |  |  |
| 62 | 1.11.4 | Rich Text Editor component with image upload and filters | 1d? | 2011-05-10 | 2011-05-10 |  | 18.5d |  |  |  |  |
| 63 | 1.11.5 | Style/Skin Editor | 1d? | 2011-05-10 | 2011-05-10 |  | 18.5d |  |  |  |  |
| 64 | 2 | **PM Portal** | 16.5d? | 2011-05-10 | 2011-06-01 |  | 3d |  |  | 148h | 6,480 |
| 65 | 2.1 | **General Site Design** | 6.5d? | 2011-05-10 | 2011-05-18 |  | 3d |  |  | 60h | 3,600 |
| 66 | 2.1.1 | Site Map | 2.5d? | 2011-05-10 | 2011-05-12 |  | 3d | 0d | VadimS | 20h | 1,200 |
| 67 | 2.1.2 | Styles | 1d? | 2011-05-12 | 2011-05-13 | 66 | 3d | 0d | VadimS | 8h | 480 |
| 68 | 2.1.3 | Maps | 1d? | 2011-05-13 | 2011-05-16 | 67 | 3d | 0d | VadimS | 8h | 480 |
| 69 | 2.1.4 | Picture Views | 1d? | 2011-05-16 | 2011-05-17 | 68 | 3d | 0d | VadimS | 8h | 480 |
| 70 | 2.1.5 | Site Layout | 1d? | 2011-05-17 | 2011-05-18 | 69 | 3d | 0d | VadimS | 8h | 480 |
| 71 | 2.1.6 | Province Selection Map | 1d? | 2011-05-10 | 2011-05-10 |  | 18.5d |  | MichaelL | 8h | 480 |
| 72 | 2.2 | **Functionality** | 16.5d? | 2011-05-10 | 2011-06-01 |  | 3d |  |  | 88h | 2,880 |
| 73 | 2.2.1 | Apartment Lister | 1d | 2011-05-18 | 2011-05-19 | 70 | 3d | 0d | VadimS | 8h | 480 |
| 74 | 2.2.2 | Apartment Details | 1d? | 2011-05-19 | 2011-05-20 | 73 | 3d | 0d | VadimS | 8h | 480 |
| 75 | 2.2.3 | Unit Details | 1d? | 2011-05-20 | 2011-05-23 | 74 | 3d | 0d | VadimS | 8h | 480 |
| 76 | 2.2.4 | Apply for lease | 1d? | 2011-05-23 | 2011-05-24 | 75 | 3d | 0d | VadimS | 8h | 480 |
| 77 | 2.2.5 | Inquary | 1d? | 2011-05-24 | 2011-05-25 | 76 | 3d | 0d | VadimS | 8h | 480 |
| 78 | 2.2.6 | Current application status, progress, actions | 1d? | 2011-05-10 | 2011-05-10 |  | 18.5d |  | EliaK | 8h |  |
| 79 | 2.2.7 | Maintanance call | 1d? | 2011-05-25 | 2011-05-26 | 77 | 3d | 0d | EliaK | 8h |  |
| 80 | 2.2.8 | Payments | 3d? | 2011-05-26 | 2011-05-31 | 79 | 3d | 0d | EliaK | 24h |  |
| 81 | 2.2.9 | Static Content Presentation | 1d? | 2011-05-31 | 2011-06-01 | 80 | 3d |  | VadimS | 8h | 480 |

Notes:
- 59: Logo, footer, etc

| ID | WBS | Task | Type | Duration | Start | Finish | Total slack | Resources | Work | Cost |
| --- | --- | --- | --- | --- | --- | --- | --- | --- | --- | --- |
| 82 | 3 | **PT Wizard** |  | 1d? | 2011-05-10 | 2011-05-10 | 18.5d |  | 8h | 480 |
| 83 | 3.1 | Mail Notifications and Invitations |  | 1d? | 2011-05-10 | 2011-05-10 | 18.5d | VladL | 8h | 480 |
| 84 | 3.2 | Co-Signer Flow | milestone | 0d | 2011-05-10 | 2011-05-10 | 19.5d | VladL |  |  |
| 85 | 4 | CRM Server |  | 1d? | 2011-05-10 | 2011-05-10 | 18.5d | VladS | 8h | 480 |
